# 种子影像组学对种子重新数字化

Schedule from a web Gantt chart, 2023-10-23 to 2024-06-28.
Saturdays and Sundays are off

## Schedule

| ID | WBS | Task | Duration | Start | Finish | Complete | inPeople |
| --- | --- | --- | --- | --- | --- | --- | --- |
| 2 | 1 | 团队组建、目标建立 | 7d | 2023-10-23 | 2023-10-31 | 80% | 郭新宇 |
| 3 | 2 | **知识体系构建** | 44d | 2023-11-15 | 2024-01-15 | 58% | 张颖、学生 |
| 4 | 2.1 | 种子影像组概念 | 1d | 2023-11-15 | 2023-11-15 | 30% | 宋安然 |
| 5 | 2.2 | **分级指标** | 44d | 2023-11-15 | 2024-01-15 | 60% |  |
| 6 | 2.2.1 | 器官 | 44d | 2023-11-15 | 2024-01-15 | 60% | 宋安然 |
| 7 | 2.2.2 | 种皮 | 44d | 2023-11-15 | 2024-01-15 | 60% | 王艳茹 |
| 8 | 2.2.3 | 种胚 | 44d | 2023-11-15 | 2024-01-15 | 60% | 张常钰 |
| 9 | 2.2.4 | 胚乳 | 44d | 2023-11-15 | 2024-01-15 | 60% | 赵帅豪 |
| 10 | 2.2.5 | 空腔 | 44d | 2023-11-15 | 2024-01-15 | 60% | 赵帅豪 |
| 11 | 2.3 | 重构种子3D几何形态的指标 | 19d | 2023-12-01 | 2023-12-27 | 30% | 张颖、宋安然、赵帅豪 |
| 12 | 3 | **实验** | 58d | 2023-11-15 | 2024-02-02 | 31% | 卢宪菊 |
| 13 | 3.1 | **实验设计** | 36d | 2023-12-04 | 2024-01-22 | 43% |  |
| 14 | 3.1.1 | **宏观影像** | 11d | 2023-12-04 | 2023-12-18 | 100% | 宋安然 |
| 15 | 3.1.1.1 | 可见近红外高光谱种子影像 | 11d | 2023-12-04 | 2023-12-18 | 100% | 宋安然 |
| 16 | 3.1.1.2 | 近红外高光谱种子影像 | 11d | 2023-12-04 | 2023-12-18 | 100% | 宋安然 |
| 17 | 3.1.1.3 | RGB高拍仪种子影像 | 11d | 2023-12-04 | 2023-12-18 | 100% | 王娟 |
| 18 | 3.1.1.4 | 微距相机种子影像 | 11d | 2023-12-04 | 2023-12-18 | 100% | 王娟 |
| 19 | 3.1.1.5 | Micro-CT种子影像 | 11d | 2023-12-04 | 2023-12-18 | 100% | 赵帅豪 |
| 20 | 3.1.1.6 | 核磁种子影像 | 11d | 2023-12-04 | 2023-12-18 | 100% |  |
| 21 | 3.1.2 | **微观实验** | 36d | 2023-12-04 | 2024-01-22 | 20% |  |
| 22 | 3.1.2.1 | 扫描电镜获取种皮表型 | 36d | 2023-12-04 | 2024-01-22 | 50% | 王艳茹 |
| 23 | 3.1.2.2 | 共聚焦获取种胚表型 | 36d | 2023-12-04 | 2024-01-22 | 30% | 张常钰 |
| 24 | 3.1.2.3 | 显微近红外（根据需求） | 36d | 2023-12-04 | 2024-01-22 |  | 宋安然 |
| 25 | 3.1.2.4 | 单细胞观察（根据需求） | 36d | 2023-12-04 | 2024-01-22 |  | 张颖 |
| 26 | 3.1.3 | 质谱仪组分采集 | 21d | 2023-12-18 | 2024-01-15 | 30% | 卢宪菊 |
| 27 | 3.1.4 | 元素分析仪组分采集 | 21d | 2023-12-18 | 2024-01-15 | 30% | 卢宪菊 |

| ID | WBS | Task | Duration | Start | Finish | Complete | inPeople |
| --- | --- | --- | --- | --- | --- | --- | --- |
| 28 | 3.2 | **实验标准** | 49d | 2023-11-15 | 2024-01-22 | 30% |  |
| 29 | 3.2.1 | **宏观影像** | 44d | 2023-11-15 | 2024-01-15 | 48% | 温维亮 |
| 30 | 3.2.1.1 | 高光谱 | 44d | 2023-11-15 | 2024-01-15 | 60% | 宋安然 |
| 31 | 3.2.1.2 | RGB | 42d | 2023-11-17 | 2024-01-15 | 60% | 王娟 |
| 32 | 3.2.1.3 | 微距 | 42d | 2023-11-17 | 2024-01-15 | 60% | 王娟 |
| 33 | 3.2.1.4 | CT | 42d | 2023-11-17 | 2024-01-15 | 60% | 赵帅豪 |
| 34 | 3.2.1.5 | 核磁 | 42d | 2023-11-17 | 2024-01-15 |  | 王柏雁 |
| 35 | 3.2.2 | **微观表型** | 49d | 2023-11-15 | 2024-01-22 | 10% | 张颖、温维亮 |
| 36 | 3.2.2.1 | 扫描电镜 | 49d | 2023-11-15 | 2024-01-22 | 20% | 王艳茹 |
| 37 | 3.2.2.2 | 共聚焦显微镜 | 49d | 2023-11-15 | 2024-01-22 | 20% | 张常钰 |
| 38 | 3.2.2.3 | 显微近红外 | 49d | 2023-11-15 | 2024-01-22 |  | 未定 |
| 39 | 3.2.2.4 | 单细胞观察 | 49d | 2023-11-15 | 2024-01-22 |  | 未定 |
| 40 | 3.3 | **实验实施** | 33d | 2023-12-20 | 2024-02-02 | 6% | 王传宇 |
| 41 | 3.3.1 | 近红外高光谱 | 3d | 2023-12-20 | 2023-12-22 | 20% | 宋安然 |
| 42 | 3.3.2 | 可见近红外高光谱 | 5d | 2023-12-25 | 2023-12-29 | 20% | 宋安然 |
| 43 | 3.3.3 | RGB | 5d | 2023-12-25 | 2023-12-29 | 20% | 王娟 |
| 44 | 3.3.4 | 微距 | 5d | 2023-12-25 | 2023-12-29 | 20% | 王娟 |
| 45 | 3.3.5 | CT | 6d | 2023-12-25 | 2024-01-01 | 20% | 郭民坤 |
| 46 | 3.3.6 | 核磁 | 11d | 2023-12-28 | 2024-01-11 | 8% | 张孟蝶 |
| 47 | 3.3.7 | 扫描电镜 | 15d | 2024-01-15 | 2024-02-02 |  | 王艳茹 |
| 48 | 3.3.8 | 共聚焦显微镜 | 15d | 2024-01-15 | 2024-02-02 |  | 张常钰 |
| 49 | 3.3.9 | 显微近红外 | 15d | 2024-01-15 | 2024-02-02 |  | 张颖老师安排 |
| 50 | 3.3.10 | 单细胞观察 | 15d | 2024-01-15 | 2024-02-02 |  | 张颖老师安排 |
| 51 | 4 | **数据解析及算法** | 87d | 2024-01-01 | 2024-04-30 | 15% | 老师指导，学生实施 |
| 52 | 4.1 | 高光谱图像解析种子组分 | 25d | 2024-01-01 | 2024-02-02 | 40% | 宋安然 |
| 53 | 4.2 | RGB图像解析颜色纹理 | 25d | 2024-01-01 | 2024-02-02 | 40% | 王娟 |
| 54 | 4.3 | CT图像解析3D几何形态 | 65d | 2024-01-01 | 2024-03-29 | 30% | 王娟、赵帅豪 |
| 55 | 4.4 | 核磁图像解析水分分布 | 55d | 2024-01-15 | 2024-03-29 |  | 王柏雁 |
| 56 | 4.5 | 高光谱+CT解析种子表型 | 30d | 2024-02-19 | 2024-03-29 |  | 宋安然 |
| 57 | 4.6 | RGB+CT解析种子几何形态 | 65d | 2024-01-01 | 2024-03-29 |  | 王娟、赵帅豪 |
| 58 | 4.7 | 种皮表型解析 | 41d | 2024-02-02 | 2024-03-29 | 30% | 王艳茹 |
| 59 | 4.8 | 胚乳表型解析 | 41d | 2024-02-02 | 2024-03-29 |  | 赵帅豪 |
| 60 | 4.9 | 种胚表型解析 | 41d | 2024-02-02 | 2024-03-29 | 20% | 张常钰 |
| 61 | 4.10 | 跨尺度表型解析（未定） | 23d | 2024-03-29 | 2024-04-30 |  |  |

| ID | WBS | Task | Duration | Start | Finish | Complete | inPeople |
| --- | --- | --- | --- | --- | --- | --- | --- |
| 62 | 5 | **知识图谱构建** | 153d | 2023-11-01 | 2024-05-31 | 15% | 王璟璐 |
| 63 | 5.1 | 内容学习 | 11d | 2023-11-01 | 2023-11-15 | 80% |  |
| 64 | 5.2 | 初步构建 | 40d | 2023-11-15 | 2024-01-09 | 80% |  |
| 65 | 5.3 | 内容细化 | 19d | 2024-01-09 | 2024-02-02 |  |  |
| 66 | 5.4 | 关联构建 | 30d | 2024-02-19 | 2024-03-29 |  |  |
| 67 | 5.5 | 知识图谱自动更新 | 23d | 2024-03-29 | 2024-04-30 |  |  |
| 68 | 5.6 | ... | 153d | 2023-11-01 | 2024-05-31 |  |  |
| 69 | 6 | **种子数字孪生** | 173d | 2023-11-01 | 2024-06-28 | 10% | 刘海深 |
| 70 | 6.1 | 其他领域数字孪生学习 | 68d | 2023-11-01 | 2024-02-02 | 30% |  |
| 71 | 6.2 | 智能种子概念 | 68d | 2023-11-01 | 2024-02-02 |  |  |
| 72 | 6.3 | 系统架构设计 | 11d | 2024-01-15 | 2024-01-29 |  |  |
| 73 | 6.4 | 体验系统开发 | 36d | 2024-01-22 | 2024-03-11 | 20% |  |
| 74 | 6.5 | 多源数据接入 | 80d | 2024-03-11 | 2024-06-28 |  |  |
| 75 | 7 | **种子单模态解析大模型** | 173d | 2023-11-01 | 2024-06-28 | 9% | 宋安然 |
| 76 | 7.1 | 医学影像解析算法学习 | 68d | 2023-11-01 | 2024-02-02 | 20% |  |
| 77 | 7.2 | 算力支持 | 54d | 2023-11-01 | 2024-01-15 | 20% |  |
| 78 | 7.3 | 种子影像大模型概念 | 54d | 2023-11-01 | 2024-01-15 |  |  |
| 79 | 7.4 | 种子单模态解析大模型构建 | 95d | 2024-02-19 | 2024-06-28 |  |  |
